# Cronograma

Schedule from MS Project, 2020-10-21 to 2021-02-04, status date 2020-12-07, costs in R$, A marks actual dates.

## Calendars

- Padrão: Mon-Fri 09:00-12:00, 13:00-18:00; Sat-Sun off.

## Resources

| Resource | Rate |
| --- | --- |
| Carlos Henrique Silva Pinto | 50 |
| João Pedro Marcelino de Sousa | 50 |
| Lucas Lima Lordello | 50 |
| Pedro Henrique M. Cruvinel | 50 |
| Wesley da Silva Ribeiro | 50 |

## Schedule

| ID | WBS | Task | Duration | Start | Finish | Predecessors | Complete | Remaining | Actual finish | Baseline start | Baseline finish | Baseline duration | Total slack | Resources | Work | Actual work | Cost | Baseline cost | Actual cost |
| --- | --- | --- | --- | --- | --- | --- | --- | --- | --- | --- | --- | --- | --- | --- | --- | --- | --- | --- | --- |
| 1 | 1 | **Despensa Esforço** | 76.28d? | 2020-10-21 A | 2021-02-04 |  | 74% | 19.84d? |  | 2020-10-21 | 2021-02-04 | 76.28d? | 0d |  | 206.36h | 162.9h | 6,444 | 8,654.5 | 5,745 |
| 2 | 1.1 | **Prospecção** | 26.38d? | 2020-10-21 A | 2020-11-26 |  | 100% |  | 2020-10-26 | 2020-10-21 | 2020-11-26 | 26.38d? |  |  | 11.69h | 11.69h | 584.5 | 584.5 | 584.5 |
| 3 | 1.1.1 | **PTEC** | 2d? | 2020-10-21 A | 2020-10-22 A |  | 100% |  |  | 2020-10-21 | 2020-10-22 | 1.25d? |  |  | 6h | 6h | 300 | 300 | 300 |
| 4 | 1.1.1.1 | Estudar Domínio de Aplicação | 1d? | 2020-10-21 A | 2020-10-21 A |  | 100% |  |  | 2020-10-21 | 2020-10-21 | 0.25d? |  | Carlos Henrique Silva Pinto [25%] | 2h | 2h | 100 | 100 | 100 |
| 5 | 1.1.1.2 | Redigir PTEC | 0.75d | 2020-10-22 A | 2020-10-22 A | 4 | 100% |  |  | 2020-10-21 | 2020-10-21 | 0.75d |  | João Pedro Marcelino de Sousa [33.3%] | 2h | 2h | 100 | 100 | 100 |
| 6 | 1.1.1.3 | Revisar PTEC | 0.25d | 2020-10-22 A | 2020-10-22 A | 5 | 100% |  |  | 2020-10-22 | 2020-10-22 | 0.25d |  | Lucas Lima Lordello | 2h | 2h | 100 | 100 | 100 |
| 7 | 1.1.2 | **Estimativa Preliminar de Tamanho** | 1d | 2020-10-24 A | 2020-10-26 A |  | 100% |  |  | 2020-10-23 | 2020-10-27 | 1.62d |  |  | 2.69h | 2.69h | 134.5 | 134.5 | 134.5 |
| 8 | 1.1.2.1 | Realizar Estimativa Preliminar de Tamanho | 1d | 2020-10-24 A | 2020-10-26 A | 6 | 100% |  |  | 2020-10-23 | 2020-10-26 | 1d |  | João Pedro Marcelino de Sousa; Lucas Lima Lordello | 1.69h | 1.69h | 84.5 | 84.5 | 84.5 |
| 9 | 1.1.2.2 | Revisar Estimativa Preliminar de Tamanho | 0.12d | 2020-10-24 A | 2020-10-26 A | 8 | 100% |  |  | 2020-10-27 | 2020-10-27 | 0.12d |  | Carlos Henrique Silva Pinto | 1h | 1h | 50 | 50 | 50 |
| 10 | 1.1.3 | **Cronograma e Orçamento Preliminares** | 1d | 2020-10-24 A | 2020-10-26 A |  | 100% |  |  | 2020-10-26 | 2020-10-28 | 1.62d |  |  | 3h | 3h | 150 | 150 | 150 |
| 11 | 1.1.3.1 | Elaborar Cronograma/Orçamento Preliminares | 1d | 2020-10-24 A | 2020-10-26 A | 8 | 100% |  |  | 2020-10-26 | 2020-10-27 | 1d |  | João Pedro Marcelino de Sousa | 2h | 2h | 100 | 100 | 100 |
| 12 | 1.1.3.2 | Revisar Estimativas de Cronograma e Orçamento | 0.12d | 2020-10-24 A | 2020-10-26 A | 11 | 100% |  |  | 2020-10-28 | 2020-10-28 | 0.12d |  | Wesley da Silva Ribeiro | 1h | 1h | 50 | 50 | 50 |
| 13 | 1.2 | **Análise** | 2.25d | 2020-10-24 A | 2020-10-28 A |  | 100% |  |  | 2020-10-28 | 2020-11-09 | 8.18d |  |  | 41.21h | 41.21h | 2,060.5 | 2,060.5 | 2,060.5 |
| 14 | 1.2.1 | **Documento de Requisitos** | 2.25d | 2020-10-24 A | 2020-10-28 A |  | 100% |  |  | 2020-10-28 | 2020-11-05 | 6.17d |  |  | 30h | 30h | 1,500 | 1,500 | 1,500 |
| 15 | 1.2.1.1 | Decompor RFCs em RFSs | 1.25d | 2020-10-24 A | 2020-10-28 A | 12 | 100% |  |  | 2020-10-28 | 2020-10-30 | 1.25d |  | João Pedro Marcelino de Sousa | 10h | 10h | 500 | 500 | 500 |
| 16 | 1.2.1.2 | Elaborar DRE | 1d | 2020-10-24 A | 2020-10-28 A | 15 | 100% |  |  | 2020-10-30 | 2020-11-03 | 1d |  | João Pedro Marcelino de Sousa | 10h | 10h | 500 | 500 | 500 |
| 17 | 1.2.1.3 | Revisar DRE | 1.25d | 2020-10-24 A | 2020-10-27 A | 16 | 100% |  |  | 2020-11-04 | 2020-11-05 | 1d |  | Carlos Henrique Silva Pinto | 10h | 10h | 500 | 500 | 500 |
| 18 | 1.2.2 | **MRB** | 1d | 2020-10-25 A | 2020-10-26 A |  | 100% |  |  | 2020-11-05 | 2020-11-09 | 2d |  |  | 11.21h | 11.21h | 560.5 | 560.5 | 560.5 |
| 19 | 1.2.2.1 | Elaborar MRB | 1d | 2020-10-25 A | 2020-10-26 A | 17 | 100% |  |  | 2020-11-05 | 2020-11-06 | 1d |  | João Pedro Marcelino de Sousa | 6.21h | 6.21h | 310.5 | 310.5 | 310.5 |
| 20 | 1.2.2.2 | Revisar MRB | 1d | 2020-10-25 A | 2020-10-26 A | 19 | 100% |  |  | 2020-11-06 | 2020-11-09 | 1d |  | Lucas Lima Lordello | 5h | 5h | 250 | 250 | 250 |
| 21 | 1.3 | **Projeto** | 1d | 2020-10-25 A | 2020-10-26 A |  | 100% |  |  | 2020-10-21 | 2020-11-16 | 18.18d |  |  | 10.3h | 10.3h | 515 | 515 | 515 |
| 22 | 1.3.1 | **Diagrama de Classses** | 1d | 2020-10-25 A | 2020-10-26 A |  | 100% |  |  | 2020-11-09 | 2020-11-12 | 3d |  |  | 6.3h | 6.3h | 315 | 315 | 315 |
| 23 | 1.3.1.1 | Elaborar Diagrama de Classes | 1d | 2020-10-25 A | 2020-10-26 A | 20 | 100% |  |  | 2020-11-09 | 2020-11-10 | 1d |  | João Pedro Marcelino de Sousa | 2.3h | 2.3h | 115 | 115 | 115 |
| 24 | 1.3.1.2 | Revisar Diagrama de Classes | 1d | 2020-10-25 A | 2020-10-26 A | 23 | 100% |  |  | 2020-11-10 | 2020-11-11 | 1d |  | Lucas Lima Lordello | 2h | 2h | 100 | 100 | 100 |
| 25 | 1.3.1.3 | Atualizar MRB | 1d | 2020-10-25 A | 2020-10-26 A | 24 | 100% |  |  | 2020-11-11 | 2020-11-12 | 1d |  | Lucas Lima Lordello | 2h | 2h | 100 | 100 | 100 |

| ID | WBS | Task | Duration | Start | Finish | Predecessors | Complete | Remaining | Baseline start | Baseline finish | Baseline duration | Total slack | Resources | Work | Actual work | Cost | Baseline cost | Actual cost |
| --- | --- | --- | --- | --- | --- | --- | --- | --- | --- | --- | --- | --- | --- | --- | --- | --- | --- | --- |
| 26 | 1.3.2 | **Modelo Entidade Relacionamento** | 1d | 2020-10-25 A | 2020-10-26 A |  | 100% |  | 2020-11-12 | 2020-11-16 | 2d |  |  | 4h | 4h | 200 | 200 | 200 |
| 27 | 1.3.2.1 | Elaborar MER | 1d | 2020-10-25 A | 2020-10-26 A | 25 | 100% |  | 2020-11-12 | 2020-11-13 | 1d |  | João Pedro Marcelino de Sousa | 2h | 2h | 100 | 100 | 100 |
| 28 | 1.3.2.2 | Revisar MER | 1d | 2020-10-25 A | 2020-10-26 A | 27 | 100% |  | 2020-11-13 | 2020-11-16 | 1d |  | Lucas Lima Lordello | 2h | 2h | 100 | 100 | 100 |
| 29 | 1.4 | **Planejamento** | 1d | 2020-10-24 A | 2020-10-26 A |  | 100% |  | 2020-10-21 | 2020-11-18 | 20.18d |  |  | 16.7h | 16.7h | 835 | 835 | 835 |
| 30 | 1.4.1 | **Estimativa de Tamanho Definitivo** | 1d | 2020-10-24 A | 2020-10-26 A |  | 100% |  | 2020-11-12 | 2020-11-16 | 2d |  |  | 8h | 8h | 400 | 400 | 400 |
| 31 | 1.4.1.1 | Realizar Estimativa de Tamanho Definitivo | 1d | 2020-10-24 A | 2020-10-26 A | 25 | 100% |  | 2020-11-12 | 2020-11-13 | 1d |  | João Pedro Marcelino de Sousa | 4h | 4h | 200 | 200 | 200 |
| 32 | 1.4.1.2 | Revisar Estimativa de Tamanho Definitivo | 1d | 2020-10-24 A | 2020-10-26 A | 31 | 100% |  | 2020-11-13 | 2020-11-16 | 1d |  | Lucas Lima Lordello | 4h | 4h | 200 | 200 | 200 |
| 33 | 1.4.2 | **Cronograma e Orçamento Definitovos** | 1d | 2020-10-24 A | 2020-10-26 A |  | 100% |  | 2020-11-16 | 2020-11-18 | 2d |  |  | 8.7h | 8.7h | 435 | 435 | 435 |
| 34 | 1.4.2.1 | Elaborar Cronograma e Orçamento Definitivos | 1d | 2020-10-24 A | 2020-10-26 A | 32 | 100% |  | 2020-11-16 | 2020-11-17 | 1d |  | João Pedro Marcelino de Sousa | 4.7h | 4.7h | 235 | 235 | 235 |
| 35 | 1.4.2.2 | Revisar Cronograma e Orçamento Definitivos | 1d | 2020-10-24 A | 2020-10-26 A | 34 | 100% |  | 2020-11-17 | 2020-11-18 | 1d |  | Lucas Lima Lordello | 4h | 4h | 200 | 200 | 200 |
| 36 | 1.5 | **Desenvolvimento** | 38d? | 2020-10-21 A | 2020-12-11 |  | 93% | 2.7d? | 2020-11-26 | 2021-01-06 | 28.9d? | 38.28d |  | 95h | 83h | 1,750 | 3,960.5 | 1,750 |
| 37 | 1.5.1 | **Realese 00** | 9d | 2020-10-21 A | 2020-11-02 A |  | 100% |  | 2020-11-26 | 2020-12-24 | 19.9d |  |  | 35h | 35h | 1,750 | 3,960.5 | 1,750 |
| 38 | 1.5.1.1 | Completar as fases de Prospecção, Análise, Projeto e Planejamento | 4.38d | 2020-10-21 A | 2020-11-02 A | 2, 13, 21, 29 | 100% |  | 2020-11-26 | 2020-12-24 | 9.9d |  | Wesley da Silva Ribeiro; Carlos Henrique Silva Pinto; João Pedro Marcelino de Sousa; Lucas Lima Lordello; Pedro Henrique M. Cruvinel | 35h | 35h | 1,750 | 3,960.5 | 1,750 |
| 39 | 1.5.2 | **Realese 01** | 1d? | 2020-12-01 A | 2020-12-01 A |  | 100% |  | 2020-12-24 | 2020-12-29 | 3d? |  |  | 16h | 16h |  |  |  |
| 40 | 1.5.2.1 | **Implementação** | 1d? | 2020-12-01 A | 2020-12-01 A |  | 100% |  | 2020-12-24 | 2020-12-28 | 2d? |  |  | 8h | 8h |  |  |  |
| 41 | 1.5.2.1.1 | Implementar RFS01 | 1d | 2020-12-01 A | 2020-12-01 A | 38 | 100% |  | 2020-12-24 | 2020-12-25 | 1d |  |  | 1h | 1h |  |  |  |
| 42 | 1.5.2.1.2 | Implementar RFS02 | 1d | 2020-12-01 A | 2020-12-01 A | 41 | 100% |  | 2020-12-25 | 2020-12-28 | 1d |  |  | 1h | 1h |  |  |  |
| 43 | 1.5.2.1.3 | Implementar RFS03 | 1d | 2020-12-01 A | 2020-12-01 A | 41 | 100% |  | 2020-12-25 | 2020-12-28 | 1d |  |  | 1h | 1h |  |  |  |
| 44 | 1.5.2.1.4 | Implementar RFS04 | 1d | 2020-12-01 A | 2020-12-01 A | 41 | 100% |  | 2020-12-25 | 2020-12-28 | 1d |  |  | 1h | 1h |  |  |  |
| 45 | 1.5.2.1.5 | Implementar RFS13 | 1d? | 2020-12-01 A | 2020-12-01 A | 38 | 100% |  | 2020-12-24 | 2020-12-25 | 1d? |  |  | 1h | 1h |  |  |  |
| 46 | 1.5.2.1.6 | Implementar RFS14 | 1d? | 2020-12-01 A | 2020-12-01 A | 45 | 100% |  | 2020-12-25 | 2020-12-28 | 1d? |  |  | 1h | 1h |  |  |  |
| 47 | 1.5.2.1.7 | Implementar RFS15 | 1d? | 2020-12-01 A | 2020-12-01 A | 45 | 100% |  | 2020-12-25 | 2020-12-28 | 1d? |  |  | 1h | 1h |  |  |  |
| 48 | 1.5.2.1.8 | Implementar RFS16 | 1d | 2020-12-01 A | 2020-12-01 A | 45 | 100% |  | 2020-12-25 | 2020-12-28 | 1d |  |  | 1h | 1h |  |  |  |
| 49 | 1.5.2.2 | **Teste** | 1d? | 2020-12-01 A | 2020-12-01 A |  | 100% |  | 2020-12-25 | 2020-12-29 | 2d? |  |  | 8h | 8h |  |  |  |
| 50 | 1.5.2.2.1 | Testar RFS01 | 1d | 2020-12-01 A | 2020-12-01 A | 41 | 100% |  | 2020-12-25 | 2020-12-28 | 1d |  |  | 1h | 1h |  |  |  |
| 51 | 1.5.2.2.2 | Testar RFS02 | 1d | 2020-12-01 A | 2020-12-01 A | 42 | 100% |  | 2020-12-28 | 2020-12-29 | 1d |  |  | 1h | 1h |  |  |  |
| 52 | 1.5.2.2.3 | Testar RFS03 | 1d | 2020-12-01 A | 2020-12-01 A | 43 | 100% |  | 2020-12-28 | 2020-12-29 | 1d |  |  | 1h | 1h |  |  |  |
| 53 | 1.5.2.2.4 | Testar RFS04 | 1d | 2020-12-01 A | 2020-12-01 A | 44 | 100% |  | 2020-12-28 | 2020-12-29 | 1d |  |  | 1h | 1h |  |  |  |
| 54 | 1.5.2.2.5 | Testar RFS13 | 1d? | 2020-12-01 A | 2020-12-01 A | 45 | 100% |  | 2020-12-25 | 2020-12-28 | 1d? |  |  | 1h | 1h |  |  |  |
| 55 | 1.5.2.2.6 | Testar RFS14 | 1d? | 2020-12-01 A | 2020-12-01 A | 46 | 100% |  | 2020-12-28 | 2020-12-29 | 1d? |  |  | 1h | 1h |  |  |  |
| 56 | 1.5.2.2.7 | Testar RFS15 | 1d? | 2020-12-01 A | 2020-12-01 A | 47 | 100% |  | 2020-12-28 | 2020-12-29 | 1d? |  |  | 1h | 1h |  |  |  |
| 57 | 1.5.2.2.8 | Testar RFS16 | 1d | 2020-12-01 A | 2020-12-01 A | 48 | 100% |  | 2020-12-28 | 2020-12-29 | 1d |  |  | 1h | 1h |  |  |  |

| ID | WBS | Task | Duration | Start | Finish | Predecessors | Complete | Baseline start | Baseline finish | Baseline duration | Work | Actual work |
| --- | --- | --- | --- | --- | --- | --- | --- | --- | --- | --- | --- | --- |
| 58 | 1.5.3 | **Release 02** | 2d? | 2020-12-05 A | 2020-12-08 A |  | 100% | 2020-12-29 | 2021-01-01 | 3d? | 32h | 32h |
| 59 | 1.5.3.1 | **Implementação** | 1d? | 2020-12-05 A | 2020-12-07 A |  | 100% | 2020-12-29 | 2020-12-31 | 2d? | 16h | 16h |
| 60 | 1.5.3.1.1 | Implementar RFS05 | 1d | 2020-12-05 A | 2020-12-07 A | 57 | 100% | 2020-12-29 | 2020-12-30 | 1d | 1h | 1h |
| 61 | 1.5.3.1.2 | Implementar RFS06 | 1d | 2020-12-05 A | 2020-12-07 A | 60 | 100% | 2020-12-30 | 2020-12-31 | 1d | 1h | 1h |
| 62 | 1.5.3.1.3 | Implementar RFS07 | 1d | 2020-12-05 A | 2020-12-07 A | 60 | 100% | 2020-12-30 | 2020-12-31 | 1d | 1h | 1h |
| 63 | 1.5.3.1.4 | Implementar RFS08 | 1d | 2020-12-05 A | 2020-12-07 A | 60 | 100% | 2020-12-30 | 2020-12-31 | 1d | 1h | 1h |
| 64 | 1.5.3.1.5 | Implementar RFS09 | 1d? | 2020-12-05 A | 2020-12-07 A | 57 | 100% | 2020-12-29 | 2020-12-30 | 1d? | 1h | 1h |
| 65 | 1.5.3.1.6 | Implementar RFS10 | 1d? | 2020-12-05 A | 2020-12-07 A | 64 | 100% | 2020-12-30 | 2020-12-31 | 1d? | 1h | 1h |
| 66 | 1.5.3.1.7 | Implementar RFS11 | 1d? | 2020-12-05 A | 2020-12-07 A | 64 | 100% | 2020-12-30 | 2020-12-31 | 1d? | 1h | 1h |
| 67 | 1.5.3.1.8 | Implementar RFS12 | 1d? | 2020-12-05 A | 2020-12-07 A | 64 | 100% | 2020-12-30 | 2020-12-31 | 1d? | 1h | 1h |
| 68 | 1.5.3.1.9 | Implementar RFS17 | 1d? | 2020-12-05 A | 2020-12-07 A | 57 | 100% | 2020-12-29 | 2020-12-30 | 1d? | 1h | 1h |
| 69 | 1.5.3.1.10 | Implementar RFS18 | 1d? | 2020-12-05 A | 2020-12-07 A | 68 | 100% | 2020-12-30 | 2020-12-31 | 1d? | 1h | 1h |
| 70 | 1.5.3.1.11 | Implementar RFS19 | 1d? | 2020-12-05 A | 2020-12-07 A | 68 | 100% | 2020-12-30 | 2020-12-31 | 1d? | 1h | 1h |
| 71 | 1.5.3.1.12 | Implementar RFS20 | 1d? | 2020-12-05 A | 2020-12-07 A | 68 | 100% | 2020-12-30 | 2020-12-31 | 1d? | 1h | 1h |
| 72 | 1.5.3.1.13 | Implementar RFS21 | 1d? | 2020-12-05 A | 2020-12-07 A | 57 | 100% | 2020-12-29 | 2020-12-30 | 1d? | 1h | 1h |
| 73 | 1.5.3.1.14 | Implementar RFS22 | 1d? | 2020-12-05 A | 2020-12-07 A | 72 | 100% | 2020-12-30 | 2020-12-31 | 1d? | 1h | 1h |
| 74 | 1.5.3.1.15 | Implementar RFS23 | 1d? | 2020-12-05 A | 2020-12-07 A | 72 | 100% | 2020-12-30 | 2020-12-31 | 1d? | 1h | 1h |
| 75 | 1.5.3.1.16 | Implementar RFS24 | 1d | 2020-12-05 A | 2020-12-07 A | 72 | 100% | 2020-12-30 | 2020-12-31 | 1d | 1h | 1h |
| 76 | 1.5.3.2 | **Teste** | 1d? | 2020-12-08 A | 2020-12-08 A |  | 100% | 2020-12-30 | 2021-01-01 | 2d? | 16h | 16h |
| 77 | 1.5.3.2.1 | Testar RFS05 | 1d? | 2020-12-08 A | 2020-12-08 A | 60 | 100% | 2020-12-30 | 2020-12-31 | 1d? | 1h | 1h |
| 78 | 1.5.3.2.2 | Testar RFS06 | 1d | 2020-12-08 A | 2020-12-08 A | 61 | 100% | 2020-12-31 | 2021-01-01 | 1d | 1h | 1h |
| 79 | 1.5.3.2.3 | Testar RFS07 | 1d? | 2020-12-08 A | 2020-12-08 A | 62 | 100% | 2020-12-31 | 2021-01-01 | 1d? | 1h | 1h |
| 80 | 1.5.3.2.4 | Testar RFS08 | 1d? | 2020-12-08 A | 2020-12-08 A | 63 | 100% | 2020-12-31 | 2021-01-01 | 1d? | 1h | 1h |
| 81 | 1.5.3.2.5 | Testar RFS09 | 1d? | 2020-12-08 A | 2020-12-08 A | 64 | 100% | 2020-12-30 | 2020-12-31 | 1d? | 1h | 1h |
| 82 | 1.5.3.2.6 | Testar RFS10 | 1d? | 2020-12-08 A | 2020-12-08 A | 65 | 100% | 2020-12-31 | 2021-01-01 | 1d? | 1h | 1h |
| 83 | 1.5.3.2.7 | Testar RFS11 | 1d? | 2020-12-08 A | 2020-12-08 A | 66 | 100% | 2020-12-31 | 2021-01-01 | 1d? | 1h | 1h |
| 84 | 1.5.3.2.8 | Testar RFS12 | 1d? | 2020-12-08 A | 2020-12-08 A | 67 | 100% | 2020-12-31 | 2021-01-01 | 1d? | 1h | 1h |
| 85 | 1.5.3.2.9 | Testar RFS17 | 1d? | 2020-12-08 A | 2020-12-08 A | 68 | 100% | 2020-12-30 | 2020-12-31 | 1d? | 1h | 1h |
| 86 | 1.5.3.2.10 | Testar RFS18 | 1d? | 2020-12-08 A | 2020-12-08 A | 69 | 100% | 2020-12-31 | 2021-01-01 | 1d? | 1h | 1h |
| 87 | 1.5.3.2.11 | Testar RFS19 | 1d? | 2020-12-08 A | 2020-12-08 A | 70 | 100% | 2020-12-31 | 2021-01-01 | 1d? | 1h | 1h |
| 88 | 1.5.3.2.12 | Testar RFS20 | 1d? | 2020-12-08 A | 2020-12-08 A | 71 | 100% | 2020-12-31 | 2021-01-01 | 1d? | 1h | 1h |
| 89 | 1.5.3.2.13 | Testar RFS21 | 1d | 2020-12-08 A | 2020-12-08 A | 72 | 100% | 2020-12-30 | 2020-12-31 | 1d | 1h | 1h |
| 90 | 1.5.3.2.14 | Testar RFS22 | 1d? | 2020-12-08 A | 2020-12-08 A | 73 | 100% | 2020-12-31 | 2021-01-01 | 1d? | 1h | 1h |
| 91 | 1.5.3.2.15 | Testar RFS23 | 1d | 2020-12-08 A | 2020-12-08 A | 74 | 100% | 2020-12-31 | 2021-01-01 | 1d | 1h | 1h |
| 92 | 1.5.3.2.16 | Testar RFS24 | 1d? | 2020-12-08 A | 2020-12-08 A | 75 | 100% | 2020-12-31 | 2021-01-01 | 1d? | 1h | 1h |

| ID | WBS | Task | Type | Duration | Start | Finish | Predecessors | Baseline start | Baseline finish | Baseline duration | Total slack | Free slack | Resources | Work | Cost | Baseline cost |
| --- | --- | --- | --- | --- | --- | --- | --- | --- | --- | --- | --- | --- | --- | --- | --- | --- |
| 93 | 1.5.4 | **Release 03** |  | 3d | 2020-12-09 | 2020-12-11 |  | 2021-01-01 | 2021-01-06 | 3d | 17.28d |  |  | 12h |  |  |
| 94 | 1.5.4.1 | **Implementação** |  | 2d | 2020-12-09 | 2020-12-10 |  | 2021-01-01 | 2021-01-05 | 2d | 17.28d |  |  | 6h |  |  |
| 95 | 1.5.4.1.1 | Implementar RFS25 |  | 1d | 2020-12-09 | 2020-12-09 | 92 | 2021-01-01 | 2021-01-04 | 1d | 17.28d | 0d |  | 3h |  |  |
| 96 | 1.5.4.1.2 | Implementar RFS26 |  | 1d | 2020-12-10 | 2020-12-10 | 95 | 2021-01-04 | 2021-01-05 | 1d | 17.28d | 0d |  | 3h |  |  |
| 97 | 1.5.4.2 | **Teste** |  | 2d | 2020-12-10 | 2020-12-11 |  | 2021-01-04 | 2021-01-06 | 2d | 18.28d |  |  | 6h |  |  |
| 98 | 1.5.4.2.1 | Testar RFS25 |  | 1d | 2020-12-10 | 2020-12-10 | 95 | 2021-01-04 | 2021-01-05 | 1d | 39.28d |  |  | 3h |  |  |
| 99 | 1.5.4.2.2 | Testar RFS26 |  | 1d | 2020-12-11 | 2020-12-11 | 96 | 2021-01-05 | 2021-01-06 | 1d | 17.28d |  |  | 3h |  |  |
| 100 | 1.6 | **Monitoramento e Controle** |  | 1d | 2021-01-06 | 2021-01-07 |  | 2021-01-06 | 2021-01-07 | 1d | 0d |  |  | 5.57h | 278.5 | 278.5 |
| 101 | 1.6.1 | Acompanhar Projeto | manual | 1d | 2021-01-06 | 2021-01-07 | 99 | 2021-01-06 | 2021-01-07 | 1d |  |  | Carlos Henrique Silva Pinto | 5.57h | 278.5 | 278.5 |
| 102 | 1.7 | **Fechamento** |  | 5d? | 2021-01-07 | 2021-01-14 |  | 2021-01-07 | 2021-01-14 | 5d? | 0d |  |  | 16.98h |  |  |
| 103 | 1.7.1 | Avaliar Projeto | manual | 1d | 2021-01-07 | 2021-01-08 | 101 | 2021-01-07 | 2021-01-08 | 1d |  |  |  | 4.98h |  |  |
| 104 | 1.7.2 | Determinar se os objetivos do negócio e do projeto foram alcançados | manual | 1d? | 2021-01-08 | 2021-01-11 | 103 | 2021-01-08 | 2021-01-11 | 1d? |  |  |  | 3h |  |  |
| 105 | 1.7.3 | Documentar os sucessos e/ou fracassos do projeto dentro do template "lições aprendidas" | manual | 1d? | 2021-01-11 | 2021-01-12 | 104 | 2021-01-11 | 2021-01-12 | 1d? |  |  |  | 3h |  |  |
| 106 | 1.7.4 | Revisar processos e templates usados na metodologia baseados nas "lições aprendidas" | manual | 1d? | 2021-01-12 | 2021-01-13 | 105 | 2021-01-12 | 2021-01-13 | 1d? |  |  |  | 3h |  |  |
| 107 | 1.7.5 | Identificar e divulgar lições aprendidas para aperfeiçoar processos para futuros projetos. | manual | 1d? | 2021-01-13 | 2021-01-14 | 106 | 2021-01-13 | 2021-01-14 | 1d? |  |  |  | 3h |  |  |
| 108 | 1.8 | **Controle de Mudanças** |  | 15d? | 2021-01-14 | 2021-02-04 |  | 2021-01-14 | 2021-02-04 | 15d? | 0d |  |  | 8.91h | 420.5 | 420.5 |
| 109 | 1.8.1 | Avaliar necessidade de Mudança | manual | 1d | 2021-01-14 | 2021-01-15 | 107 | 2021-01-14 | 2021-01-15 | 1d |  |  | Lucas Lima Lordello; Carlos Henrique Silva Pinto; João Pedro Marcelino de Sousa; Pedro Henrique M. Cruvinel; Wesley da Silva Ribeiro | 1h | 50 | 50 |
| 110 | 1.8.2 | Solicitar Mudança | manual | 1d? | 2021-01-15 | 2021-01-18 | 109 | 2021-01-15 | 2021-01-18 | 1d? |  |  |  |  |  |  |
| 111 | 1.8.3 | Registrar informações referentes ao controle de mudanças | manual | 1d | 2021-01-18 | 2021-01-19 | 110 | 2021-01-18 | 2021-01-19 | 1d |  |  | João Pedro Marcelino de Sousa | 1h | 50 | 50 |
| 112 | 1.8.4 | Revisar impacto dos custos, prazos e benefícios gerados pela mudança | manual | 1d | 2021-01-19 | 2021-01-20 | 111 | 2021-01-19 | 2021-01-20 | 1d |  |  | Lucas Lima Lordello | 1h | 50 | 50 |
| 113 | 1.8.5 | Avaliar impacto | manual | 1d | 2021-01-20 | 2021-01-21 | 112 | 2021-01-20 | 2021-01-21 | 1d |  |  | João Pedro Marcelino de Sousa | 0.91h | 45.5 | 45.5 |
| 114 | 1.8.6 | Avaliar Risco | manual | 1d | 2021-01-21 | 2021-01-22 | 113 | 2021-01-21 | 2021-01-22 | 1d |  |  | Lucas Lima Lordello | 1h | 50 | 50 |
| 115 | 1.8.7 | Conseguir aprovação de todos os responsáveis pelos setores envolvidos | manual | 1d? | 2021-01-22 | 2021-01-25 | 114 | 2021-01-22 | 2021-01-25 | 1d? |  |  |  |  |  |  |
| 116 | 1.8.8 | Fazer uma reunião com os setores envolvidos | manual | 1d? | 2021-01-25 | 2021-01-26 | 115 | 2021-01-25 | 2021-01-26 | 1d? |  |  |  | 0.5h |  |  |
| 117 | 1.8.9 | Elaborar uma replanejamento contemplando a mudança | manual | 1d | 2021-01-26 | 2021-01-27 | 116 | 2021-01-26 | 2021-01-27 | 1d |  |  | João Pedro Marcelino de Sousa; Lucas Lima Lordello; Carlos Henrique Silva Pinto | 1h | 50 | 50 |
| 118 | 1.8.10 | Validar ações propostas | manual | 1d? | 2021-01-27 | 2021-01-28 | 117 | 2021-01-27 | 2021-01-28 | 1d? |  |  |  |  |  |  |
| 119 | 1.8.11 | Elaborar o Cronograma referente à implementação da mudança | manual | 1d | 2021-01-28 | 2021-01-29 | 118 | 2021-01-28 | 2021-01-29 | 1d |  |  | João Pedro Marcelino de Sousa | 1h | 50 | 50 |
| 120 | 1.8.12 | Verificar a relação de documentos a serem elaborados e/ou revisados | manual | 1d | 2021-01-29 | 2021-02-01 | 119 | 2021-01-29 | 2021-02-01 | 1d |  |  | Lucas Lima Lordello | 1h | 50 | 50 |
| 121 | 1.8.13 | Executar e controlar a mudança | manual | 1d | 2021-02-01 | 2021-02-02 | 120 | 2021-02-01 | 2021-02-02 | 1d |  |  |  |  |  |  |
| 122 | 1.8.14 | Encerrar a entrega ou resultado contemplando a mudança | manual | 1d? | 2021-02-02 | 2021-02-03 | 121 | 2021-02-02 | 2021-02-03 | 1d? |  |  |  |  |  |  |
| 123 | 1.8.15 | Monitorar a mudança | manual | 1d | 2021-02-03 | 2021-02-04 | 122 | 2021-02-03 | 2021-02-04 | 1d |  |  | Carlos Henrique Silva Pinto | 0.5h | 25 | 25 |
